# Проект name

Schedule from MS Project, 2021-03-01 to 2021-08-10, costs in ₽.
Длительность проекта - 6 месяцев / Бюджет проекта - 50 000 рублей / Команда - 16 человек

## Calendars

- Стандартный: Mon-Fri 09:00-13:00, 14:00-18:00; Sat-Sun off. Exceptions (off unless hours are given): 2021-03-08 (Международный женский день), 2021-05-03 (Перенос с 1 мая), 2021-05-10 (Перенос с 9 мая), 2021-06-14 (Перенос с 12 июня).

## Resources

| Resource | Group | Rate | Cost per use |
| --- | --- | --- | --- |
| Ведущий программист | Программирование | 10 | 100 |
| Программист №1 | Программирование | 7 | 50 |
| Программист №2 | Программирование | 7 | 50 |
| Программист №3 | Программирование | 7 | 50 |
| Программист №4 | Программирование | 7 | 50 |
| Системный аналитик | Анализ | 20 | 300 |
| Художник-дизайнер | Дизайн | 8 | 70 |
| Технический писатель | Документация | 5 | 20 |
| Web-дизайнер | Internet | 7 | 50 |
| 3D-аниматор | Дизайн | 8 | 70 |
| Мультимедиа-корреспондент | M-медиа | 3 | 20 |
| Наборщик данных №1 | Ввод данных | 2 | 10 |
| Наборщик данных №2 | Ввод данных | 2 | 10 |
| Наборщик данных №3 | Ввод данных | 2 | 10 |
| Наборщик данных №4 | Ввод данных | 2 | 10 |
| Наборщик данных №5 | Ввод данных | 2 | 10 |
| Сервер | Сервер | 2 |  |

## Schedule

| ID | WBS | Task | Type | Duration | Start | Finish | Predecessors | Total slack | Free slack | Resources | Work | Cost |
| --- | --- | --- | --- | --- | --- | --- | --- | --- | --- | --- | --- | --- |
| 1 | 1 | Начало проекта | milestone | 0w | 2021-03-01 09:00 | 2021-03-01 09:00 |  | 55.38d | 0d |  |  |  |
| 2 | 2 | **Создание интерфейса** |  | 91d | 2021-03-01 09:00 | 2021-07-09 18:00 | 1 | 0d |  |  | 560h | 5,600 |
| 3 | 2.1 | **Разработка дизайна интерфейса** |  | 25.62d | 2021-03-01 09:00 | 2021-04-06 15:00 |  | 55.38d | 0d |  | 320h | 2,770 |
| 4 | 2.1.1 | Разработка 2D графических элементов |  | 3w | 2021-03-01 09:00 | 2021-03-23 12:00 |  | 55.38d | 0d | Художник-дизайнер | 120h | 1,030 |
| 5 | 2.1.2 | Разработка 3D графических элементов |  | 2w | 2021-03-01 09:00 | 2021-03-16 11:00 | 4SS | 55.38d | 0d | 3D-аниматор | 80h | 710 |
| 6 | 2.1.3 | Создание заставки |  | 3w | 2021-03-16 11:00 | 2021-04-06 15:00 | 5 | 55.38d |  | 3D-аниматор | 120h | 1,030 |
| 7 | 2.2 | Программирование интерфейса |  | 2w | 2021-06-28 09:00 | 2021-07-09 18:00 | 3, 12 | 0d |  | Программист №3; Программист №4; Программист №1 | 240h | 1,830 |
| 8 | 3 | **Построение базы объектов** |  | 80.5d | 2021-03-23 12:00 | 2021-07-16 17:00 |  | 16.38d |  | Сервер | 5485h | 15,110 |
| 9 | 3.1 | Построение базы объектов |  | 2w | 2021-03-23 12:00 | 2021-04-06 15:00 |  | 16.38d | 0d | Системный аналитик | 80h | 1,900 |
| 10 | 3.2 | Программирование средств обработки базы объектов |  | 2.05w | 2021-04-06 15:00 | 2021-04-20 17:00 | 9 | 16.38d | 0d | Программист №3; Программист №4; Программист №2 | 240h | 1,830 |
| 11 | 3.3 | Наполнение базы объектов |  | 12w | 2021-04-20 17:00 | 2021-07-16 17:00 | 10 | 16.38d |  | Наборщик данных №1; Наборщик данных №2; Наборщик данных №3; Наборщик данных №4; Наборщик данных №5 | 2400h | 4,850 |
| 12 | 4 | **Создание ядра GIS** |  | 81d | 2021-03-01 09:00 | 2021-06-25 18:00 |  | 0d |  |  | 2059h | 19,652 |
| 13 | 4.1 | Анализ и проектирование ядра |  | 3w | 2021-03-01 09:00 | 2021-03-23 12:00 |  | 0d |  | Ведущий программист; Системный аналитик | 240h | 4,000 |
| 14 | 4.2 | Создание модели ядра |  | 5.12w | 2021-03-23 12:00 | 2021-04-27 18:00 | 13 | 0d |  | Программист №1; Ведущий программист | 400h | 3,550 |
| 15 | 4.3 | Тестирование модели ядра |  | 1w | 2021-04-28 09:00 | 2021-05-05 18:00 | 14 | 0d |  | Программист №1 | 40h | 330 |
| 16 | 4.4 | Создание рабочей версии ядра |  | 7w | 2021-05-06 09:00 | 2021-06-25 18:00 | 15 | 0d |  | Ведущий программист; Программист №1; Программист №2; Программист №3; Программист №4 | 1379h | 10,772 |
| 17 | 5 | Создание мультимедиа – наполнения |  | 6w | 2021-04-06 15:00 | 2021-05-21 13:00 | 3 | 55.75d |  | Мультимедиа-корреспондент | 240h | 740 |
| 18 | 6 | Создание справочной системы |  | 2w | 2021-07-22 09:00 | 2021-08-05 13:00 | 7 | 2.75d |  | Технический писатель | 80h | 420 |
| 19 | 7 | **Создание руководства пользователя** |  | 17.88d | 2021-06-28 09:00 | 2021-07-21 17:00 | 7FS-10d | 0d |  |  | 160h | 1,010 |
| 20 | 7.1 | Разработка дизайна руководства |  | 1w | 2021-06-28 09:00 | 2021-07-05 11:00 |  | 0d |  | Художник-дизайнер | 40h | 390 |
| 21 | 7.2 | Написание руководства пользователя |  | 3w | 2021-06-30 10:00 | 2021-07-21 17:00 | 20SS+2d | 0d |  | Технический писатель | 120h | 620 |
| 22 | 8 | **Создание web – сайта и поддержка** |  | 24.12d | 2021-06-30 10:00 | 2021-08-03 11:00 |  | 0d |  |  | 248h | 2,106 |
| 23 | 8.1 | Разработка структуры сайта |  | 1d | 2021-06-30 10:00 | 2021-07-01 10:00 | 21SS | 0d |  | Web-дизайнер | 8h | 106 |
| 24 | 8.2 | Разработка дизайна сайта |  | 1.43w | 2021-07-01 10:00 | 2021-07-12 13:00 | 23 | 0d |  | 3D-аниматор; Web-дизайнер; Художник-дизайнер | 120h | 1,110 |
| 25 | 8.3 | Наполнение сайта |  | 3w | 2021-07-12 14:00 | 2021-08-03 11:00 | 24 | 0d |  | Web-дизайнер | 120h | 890 |
| 26 | 9 | Тестирование сайта |  | 2w | 2021-07-27 11:00 | 2021-08-10 11:00 | 22FS-1w | 0d |  | Ведущий программист; Программист №1; Программист №2; Программист №3; Программист №4 | 394h | 3,280 |
| 27 | 10 | Сдача сайта в эксплуатацию | milestone | 0w | 2021-08-10 11:00 | 2021-08-10 11:00 | 26 | 0d |  |  |  |  |

| ID | WBS | Task | Type | Duration | Start | Finish | Total slack | Constraint | Resources | Work | Cost |
| --- | --- | --- | --- | --- | --- | --- | --- | --- | --- | --- | --- |
| 28 | 11 | **Совещание** |  | 106.12d | 2021-03-03 09:00 | 2021-08-04 10:00 | 0d |  |  | 161h | 1,403 |
| 29 | 11.1 | Совещание 1 | manual | 1h | 2021-03-03 09:00 | 2021-03-03 10:00 |  | start no earlier than 2021-03-03 09:00 | 3D-аниматор; Web-дизайнер; Ведущий программист; Мультимедиа-корреспондент; Системный аналитик; Технический писатель; Художник-дизайнер | 7h | 61 |
| 30 | 11.2 | Совещание 2 | manual | 1h | 2021-03-10 09:00 | 2021-03-10 10:00 |  | start no earlier than 2021-03-10 09:00 | 3D-аниматор; Web-дизайнер; Ведущий программист; Мультимедиа-корреспондент; Системный аналитик; Технический писатель; Художник-дизайнер | 7h | 61 |
| 31 | 11.3 | Совещание 3 | manual | 1h | 2021-03-17 09:00 | 2021-03-17 10:00 |  | start no earlier than 2021-03-17 09:00 | 3D-аниматор; Web-дизайнер; Ведущий программист; Мультимедиа-корреспондент; Системный аналитик; Технический писатель; Художник-дизайнер | 7h | 61 |
| 32 | 11.4 | Совещание 4 | manual | 1h | 2021-03-24 09:00 | 2021-03-24 10:00 |  | start no earlier than 2021-03-24 09:00 | 3D-аниматор; Web-дизайнер; Ведущий программист; Мультимедиа-корреспондент; Системный аналитик; Технический писатель; Художник-дизайнер | 7h | 61 |
| 33 | 11.5 | Совещание 5 | manual | 1h | 2021-03-31 09:00 | 2021-03-31 10:00 |  | start no earlier than 2021-03-31 09:00 | 3D-аниматор; Web-дизайнер; Ведущий программист; Мультимедиа-корреспондент; Системный аналитик; Технический писатель; Художник-дизайнер | 7h | 61 |
| 34 | 11.6 | Совещание 6 | manual | 1h | 2021-04-07 09:00 | 2021-04-07 10:00 |  | start no earlier than 2021-04-07 09:00 | 3D-аниматор; Web-дизайнер; Ведущий программист; Мультимедиа-корреспондент; Системный аналитик; Технический писатель; Художник-дизайнер | 7h | 61 |
| 35 | 11.7 | Совещание 7 | manual | 1h | 2021-04-14 09:00 | 2021-04-14 10:00 |  | start no earlier than 2021-04-14 09:00 | 3D-аниматор; Web-дизайнер; Ведущий программист; Мультимедиа-корреспондент; Системный аналитик; Технический писатель; Художник-дизайнер | 7h | 61 |
| 36 | 11.8 | Совещание 8 | manual | 1h | 2021-04-21 09:00 | 2021-04-21 10:00 |  | start no earlier than 2021-04-21 09:00 | 3D-аниматор; Web-дизайнер; Ведущий программист; Мультимедиа-корреспондент; Системный аналитик; Технический писатель; Художник-дизайнер | 7h | 61 |
| 37 | 11.9 | Совещание 9 | manual | 1h | 2021-04-28 09:00 | 2021-04-28 10:00 |  | start no earlier than 2021-04-28 09:00 | 3D-аниматор; Web-дизайнер; Ведущий программист; Мультимедиа-корреспондент; Системный аналитик; Технический писатель; Художник-дизайнер | 7h | 61 |
| 38 | 11.10 | Совещание 10 | manual | 1h | 2021-05-05 09:00 | 2021-05-05 10:00 |  | start no earlier than 2021-05-05 09:00 | 3D-аниматор; Web-дизайнер; Ведущий программист; Мультимедиа-корреспондент; Системный аналитик; Технический писатель; Художник-дизайнер | 7h | 61 |
| 39 | 11.11 | Совещание 11 | manual | 1h | 2021-05-12 09:00 | 2021-05-12 10:00 |  | start no earlier than 2021-05-12 09:00 | 3D-аниматор; Web-дизайнер; Ведущий программист; Мультимедиа-корреспондент; Системный аналитик; Технический писатель; Художник-дизайнер | 7h | 61 |
| 40 | 11.12 | Совещание 12 | manual | 1h | 2021-05-19 09:00 | 2021-05-19 10:00 |  | start no earlier than 2021-05-19 09:00 | 3D-аниматор; Web-дизайнер; Ведущий программист; Мультимедиа-корреспондент; Системный аналитик; Технический писатель; Художник-дизайнер | 7h | 61 |
| 41 | 11.13 | Совещание 13 | manual | 1h | 2021-05-26 09:00 | 2021-05-26 10:00 |  | start no earlier than 2021-05-26 09:00 | 3D-аниматор; Web-дизайнер; Ведущий программист; Мультимедиа-корреспондент; Системный аналитик; Технический писатель; Художник-дизайнер | 7h | 61 |
| 42 | 11.14 | Совещание 14 | manual | 1h | 2021-06-02 09:00 | 2021-06-02 10:00 |  | start no earlier than 2021-06-02 09:00 | 3D-аниматор; Web-дизайнер; Ведущий программист; Мультимедиа-корреспондент; Системный аналитик; Технический писатель; Художник-дизайнер | 7h | 61 |
| 43 | 11.15 | Совещание 15 | manual | 1h | 2021-06-09 09:00 | 2021-06-09 10:00 |  | start no earlier than 2021-06-09 09:00 | 3D-аниматор; Web-дизайнер; Ведущий программист; Мультимедиа-корреспондент; Системный аналитик; Технический писатель; Художник-дизайнер | 7h | 61 |
| 44 | 11.16 | Совещание 16 | manual | 1h | 2021-06-16 09:00 | 2021-06-16 10:00 |  | start no earlier than 2021-06-16 09:00 | 3D-аниматор; Web-дизайнер; Ведущий программист; Мультимедиа-корреспондент; Системный аналитик; Технический писатель; Художник-дизайнер | 7h | 61 |
| 45 | 11.17 | Совещание 17 | manual | 1h | 2021-06-23 09:00 | 2021-06-23 10:00 |  | start no earlier than 2021-06-23 09:00 | 3D-аниматор; Web-дизайнер; Ведущий программист; Мультимедиа-корреспондент; Системный аналитик; Технический писатель; Художник-дизайнер | 7h | 61 |
| 46 | 11.18 | Совещание 18 | manual | 1h | 2021-06-30 09:00 | 2021-06-30 10:00 |  | start no earlier than 2021-06-30 09:00 | 3D-аниматор; Web-дизайнер; Ведущий программист; Мультимедиа-корреспондент; Системный аналитик; Технический писатель; Художник-дизайнер | 7h | 61 |
| 47 | 11.19 | Совещание 19 | manual | 1h | 2021-07-07 09:00 | 2021-07-07 10:00 |  | start no earlier than 2021-07-07 09:00 | 3D-аниматор; Web-дизайнер; Ведущий программист; Мультимедиа-корреспондент; Системный аналитик; Технический писатель; Художник-дизайнер | 7h | 61 |
| 48 | 11.20 | Совещание 20 | manual | 1h | 2021-07-14 09:00 | 2021-07-14 10:00 |  | start no earlier than 2021-07-14 09:00 | 3D-аниматор; Web-дизайнер; Ведущий программист; Мультимедиа-корреспондент; Системный аналитик; Технический писатель; Художник-дизайнер | 7h | 61 |
| 49 | 11.21 | Совещание 21 | manual | 1h | 2021-07-21 09:00 | 2021-07-21 10:00 |  | start no earlier than 2021-07-21 09:00 | 3D-аниматор; Web-дизайнер; Ведущий программист; Мультимедиа-корреспондент; Системный аналитик; Технический писатель; Художник-дизайнер | 7h | 61 |
| 50 | 11.22 | Совещание 22 | manual | 1h | 2021-07-28 09:00 | 2021-07-28 10:00 |  | start no earlier than 2021-07-28 09:00 | 3D-аниматор; Web-дизайнер; Ведущий программист; Мультимедиа-корреспондент; Системный аналитик; Технический писатель; Художник-дизайнер | 7h | 61 |
| 51 | 11.23 | Совещание 23 | manual | 1h | 2021-08-04 09:00 | 2021-08-04 10:00 |  | start no earlier than 2021-08-04 09:00 | 3D-аниматор; Web-дизайнер; Ведущий программист; Мультимедиа-корреспондент; Системный аналитик; Технический писатель; Художник-дизайнер | 7h | 61 |
