# Проект name

Schedule from MS Project, 2021-03-01 to 2021-08-18, status date 2021-05-05, 9 hours a day, costs in ₽, A marks actual dates.
Длительность проекта - 6 месяцев / Бюджет проекта - 50 000 рублей / Команда - 16 человек

## Calendars

- Стандартный: Mon-Fri 09:00-13:00, 14:00-18:00; Sat-Sun off. Exceptions (off unless hours are given): 2021-03-08 (Международный женский день), 2021-05-03 (Перенос с 1 мая), 2021-05-10 (Перенос с 9 мая), 2021-06-14 (Перенос с 12 июня).

## Resources

| Resource | Group | Rate | Cost per use |
| --- | --- | --- | --- |
| Ведущий программист | Программирование | 10 | 100 |
| Программист №1 | Программирование | 7 | 50 |
| Программист №2 | Программирование | 7 | 50 |
| Программист №3 | Программирование | 7 | 50 |
| Программист №4 | Программирование | 7 | 50 |
| Системный аналитик | Анализ | 20 | 300 |
| Художник-дизайнер | Дизайн | 8 | 70 |
| Технический писатель | Документация | 5 | 20 |
| Web-дизайнер | Internet | 7 | 50 |
| 3D-аниматор | Дизайн | 9.6 | 70 |
| Мультимедиа-корреспондент | M-медиа | 3 | 20 |
| Наборщик данных №1 | Ввод данных | 2 | 10 |
| Наборщик данных №2 | Ввод данных | 2 | 10 |
| Наборщик данных №3 | Ввод данных | 2 | 10 |
| Наборщик данных №4 | Ввод данных | 2 | 10 |
| Наборщик данных №5 | Ввод данных | 2 | 10 |
| Сервер | Сервер | 2 |  |

## Schedule

| ID | WBS | Task | Type | Duration | Start | Finish | Predecessors | Complete | Remaining | Total slack | Free slack | Constraint | Resources | Work | Actual work | Cost | Actual cost |
| --- | --- | --- | --- | --- | --- | --- | --- | --- | --- | --- | --- | --- | --- | --- | --- | --- | --- |
| 1 | 1 | Начало проекта | milestone | 0w | 2021-03-01 09:00 A | 2021-03-01 09:00 A |  | 100% |  |  |  |  |  |  |  |  |  |
| 2 | 2 | **Создание интерфейса** |  | 79.89d | 2021-03-01 09:00 A | 2021-07-08 17:00 | 1 | 81% | 14.97d | 5.89d |  |  |  | 587h | 347h | 6,185.6 | 3,997.6 |
| 3 | 2.1 | **Разработка дизайна интерфейса** |  | 25.89d | 2021-03-01 09:00 A | 2021-04-12 10:00 A |  | 100% |  |  |  |  |  | 347h | 347h | 3,187.6 | 3,187.6 |
| 4 | 2.1.1 | Разработка 2D графических элементов |  | 2.67w | 2021-03-01 09:00 A | 2021-03-23 12:00 A |  | 100% |  |  |  |  | Художник-дизайнер | 120h | 120h | 1,030 | 1,030 |
| 5 | 2.1.2 | Разработка 3D графических элементов |  | 1.78w | 2021-03-01 09:00 A | 2021-03-16 11:00 A | 4SS | 100% |  |  |  |  | 3D-аниматор | 80h | 80h | 710 | 710 |
| 6 | 2.1.3 | Создание заставки |  | 3.27w | 2021-03-16 11:00 A | 2021-04-12 10:00 A | 5 | 100% |  |  |  |  | 3D-аниматор | 147h | 147h | 1,447.6 | 1,447.6 |
| 7 | 2.2 | Программирование интерфейса |  | 1.78w | 2021-06-25 18:00 | 2021-07-08 17:00 | 3, 12 |  |  | 5.89d | 0d |  | Программист №3; Программист №4; Программист №1 | 240h |  | 1,998 |  |
| 8 | 3 | **Построение базы объектов** |  | 71.56d | 2021-03-23 12:00 A | 2021-07-16 17:00 |  | 23% | 55.33d | 20.22d |  |  | Сервер | 5485h | 901.88h | 15,450.79 | 5,004.6 |
| 9 | 3.1 | Построение базы объектов |  | 1.78w | 2021-03-23 12:00 A | 2021-04-06 15:00 A |  | 100% |  |  |  |  | Системный аналитик | 80h | 80h | 1,900 | 1,900 |
| 10 | 3.2 | Программирование средств обработки базы объектов |  | 1.82w | 2021-04-06 15:00 A | 2021-04-20 17:00 | 9 | 80% | 0.36w | 20.22d | 0d |  | Программист №3; Программист №4; Программист №2 | 240h | 194.8h | 1,942 | 1,605.44 |
| 11 | 3.3 | Наполнение базы объектов |  | 10.67w | 2021-04-20 17:00 | 2021-07-16 17:00 | 10 |  |  | 20.22d |  |  | Наборщик данных №1; Наборщик данных №2; Наборщик данных №3; Наборщик данных №4; Наборщик данных №5 | 2400h |  | 4,850 |  |
| 12 | 4 | **Создание ядра GIS** |  | 72d | 2021-03-01 09:00 A | 2021-06-25 18:00 |  | 48% | 37.59d | 5.89d | 0d |  |  | 1779h | 640h | 18,339.9 | 8,121.7 |
| 13 | 4.1 | Анализ и проектирование ядра |  | 2.67w | 2021-03-01 09:00 A | 2021-03-23 12:00 A |  | 100% |  |  |  |  | Ведущий программист; Системный аналитик | 240h | 240h | 4,000 | 4,000 |
| 14 | 4.2 | Создание модели ядра |  | 4.56w | 2021-03-23 12:00 A | 2021-04-27 18:00 A | 13 | 100% |  |  |  |  | Программист №1; Ведущий программист | 400h | 400h | 3,641.7 | 3,641.7 |
| 15 | 4.3 | Тестирование модели ядра |  | 0.89w | 2021-04-27 18:00 | 2021-05-05 12:00 | 14 |  |  | 5.89d | 0d |  | Программист №1 | 40h |  | 358 |  |
| 16 | 4.4 | Создание рабочей версии ядра |  | 7w | 2021-05-05 12:00 | 2021-06-25 18:00 | 15 |  |  | 5.89d |  |  | Ведущий программист; Программист №1; Программист №3; Программист №4 | 1099h |  | 9,340.2 |  |
| 17 | 5 | Создание мультимедиа – наполнения |  | 5.33w | 2021-04-12 10:00 | 2021-05-28 15:00 | 3 |  |  | 50.67d |  |  | Мультимедиа-корреспондент | 240h |  | 740 |  |
| 18 | 6 | Создание справочной системы |  | 1.78w | 2021-08-04 10:00 | 2021-08-18 15:00 | 7 |  |  | 0d |  | finish no earlier than 2021-08-05 18:00 | Технический писатель | 80h |  | 420 |  |
| 19 | 7 | **Создание руководства пользователя** |  | 16.33d | 2021-06-24 17:00 | 2021-07-21 11:00 | 7FS-8.89d |  |  | 5.78d |  |  |  | 160h |  | 1,010 |  |
| 20 | 7.1 | Разработка дизайна руководства |  | 0.89w | 2021-06-24 17:00 | 2021-07-02 11:00 |  |  |  | 5.89d | 0.11d |  | Художник-дизайнер | 40h |  | 390 |  |
| 21 | 7.2 | Написание руководства пользователя |  | 2.67w | 2021-06-29 09:00 | 2021-07-21 11:00 | 20SS+1.78d |  |  | 5.78d | 0d |  | Технический писатель | 120h |  | 620 |  |
| 22 | 8 | **Создание web – сайта и поддержка** |  | 22d | 2021-06-29 09:00 | 2021-08-02 16:00 |  |  |  | 5.78d | 0d |  |  | 248h |  | 2,170 |  |
| 23 | 8.1 | Разработка структуры сайта |  | 0.89d | 2021-06-29 09:00 | 2021-06-29 18:00 | 21SS |  |  | 5.78d | 0d |  | Web-дизайнер | 8h |  | 106 |  |
| 24 | 8.2 | Разработка дизайна сайта |  | 1.27w | 2021-06-30 10:00 | 2021-07-09 15:00 | 23 |  |  | 5.78d | 0d |  | 3D-аниматор; Web-дизайнер; Художник-дизайнер | 120h |  | 1,174 |  |
| 25 | 8.3 | Наполнение сайта |  | 2.67w | 2021-07-09 15:00 | 2021-08-02 16:00 | 24 |  |  | 5.78d |  |  | Web-дизайнер | 120h |  | 890 |  |
| 26 | 9 | Тестирование сайта |  | 2.04w | 2021-07-26 16:00 | 2021-08-10 10:00 | 22FS-0.89w |  |  | 5.78d | 0d |  | Ведущий программист; Программист №1; Программист №3; Программист №4 | 314h |  | 2,838 |  |
| 27 | 10 | Сдача сайта в эксплуатацию | milestone | 0w | 2021-08-10 10:00 | 2021-08-10 10:00 | 26 |  |  | 5.78d |  |  |  |  |  |  |  |

| ID | WBS | Task | Duration | Start | Finish | Complete | Remaining | Total slack | Constraint | Resources | Work | Actual work | Cost | Actual cost |
| --- | --- | --- | --- | --- | --- | --- | --- | --- | --- | --- | --- | --- | --- | --- |
| 28 | 11 | **Совещание** | 94.33d | 2021-03-03 09:00 A | 2021-08-04 10:00 | 44% | 52.75d | 9.33d |  |  | 161h | 70h | 1,403 | 610 |
| 29 | 11.1 | Совещание 1 | 1h | 2021-03-03 09:00 A | 2021-03-03 10:00 A | 100% |  |  | start no earlier than 2021-03-03 09:00 | 3D-аниматор; Web-дизайнер; Ведущий программист; Мультимедиа-корреспондент; Системный аналитик; Технический писатель; Художник-дизайнер | 7h | 7h | 61 | 61 |
| 30 | 11.2 | Совещание 2 | 1h | 2021-03-10 09:00 A | 2021-03-10 10:00 A | 100% |  |  | start no earlier than 2021-03-10 09:00 | 3D-аниматор; Web-дизайнер; Ведущий программист; Мультимедиа-корреспондент; Системный аналитик; Технический писатель; Художник-дизайнер | 7h | 7h | 61 | 61 |
| 31 | 11.3 | Совещание 3 | 1h | 2021-03-17 09:00 A | 2021-03-17 10:00 A | 100% |  |  | start no earlier than 2021-03-17 09:00 | 3D-аниматор; Web-дизайнер; Ведущий программист; Мультимедиа-корреспондент; Системный аналитик; Технический писатель; Художник-дизайнер | 7h | 7h | 61 | 61 |
| 32 | 11.4 | Совещание 4 | 1.25h | 2021-03-24 09:00 A | 2021-03-24 10:15 A | 100% |  |  | start no earlier than 2021-03-24 09:00 | 3D-аниматор; Web-дизайнер; Ведущий программист; Мультимедиа-корреспондент; Системный аналитик [80%]; Технический писатель; Художник-дизайнер | 7h | 7h | 61 | 61 |
| 33 | 11.5 | Совещание 5 | 1h | 2021-03-31 09:00 A | 2021-03-31 10:00 A | 100% |  |  | start no earlier than 2021-03-31 09:00 | 3D-аниматор; Web-дизайнер; Ведущий программист; Мультимедиа-корреспондент; Системный аналитик; Технический писатель; Художник-дизайнер | 7h | 7h | 61 | 61 |
| 34 | 11.6 | Совещание 6 | 1h | 2021-04-07 09:00 A | 2021-04-07 10:00 A | 100% |  |  | start no earlier than 2021-04-07 09:00 | 3D-аниматор; Web-дизайнер; Ведущий программист; Мультимедиа-корреспондент; Системный аналитик; Технический писатель; Художник-дизайнер | 7h | 7h | 61 | 61 |
| 35 | 11.7 | Совещание 7 | 1h | 2021-04-14 09:00 A | 2021-04-14 10:00 A | 100% |  |  | start no earlier than 2021-04-14 09:00 | 3D-аниматор; Web-дизайнер; Ведущий программист; Мультимедиа-корреспондент; Системный аналитик; Технический писатель; Художник-дизайнер | 7h | 7h | 61 | 61 |
| 36 | 11.8 | Совещание 8 | 1h | 2021-04-21 09:00 A | 2021-04-21 10:00 A | 100% |  |  | start no earlier than 2021-04-21 09:00 | 3D-аниматор; Web-дизайнер; Ведущий программист; Мультимедиа-корреспондент; Системный аналитик; Технический писатель; Художник-дизайнер | 7h | 7h | 61 | 61 |
| 37 | 11.9 | Совещание 9 | 1h | 2021-04-28 09:00 A | 2021-04-28 10:00 A | 100% |  |  | start no earlier than 2021-04-28 09:00 | 3D-аниматор; Web-дизайнер; Ведущий программист; Мультимедиа-корреспондент; Системный аналитик; Технический писатель; Художник-дизайнер | 7h | 7h | 61 | 61 |
| 38 | 11.10 | Совещание 10 | 1h | 2021-05-05 09:00 A | 2021-05-05 10:00 A | 100% |  |  | start no earlier than 2021-05-05 09:00 | 3D-аниматор; Web-дизайнер; Ведущий программист; Мультимедиа-корреспондент; Системный аналитик; Технический писатель; Художник-дизайнер | 7h | 7h | 61 | 61 |
| 39 | 11.11 | Совещание 11 | 1h | 2021-05-12 09:00 | 2021-05-12 10:00 |  |  | 61.78d | start no earlier than 2021-05-12 09:00 | 3D-аниматор; Web-дизайнер; Ведущий программист; Мультимедиа-корреспондент; Системный аналитик; Технический писатель; Художник-дизайнер | 7h |  | 61 |  |
| 40 | 11.12 | Совещание 12 | 1h | 2021-05-19 09:00 | 2021-05-19 10:00 |  |  | 57.33d | start no earlier than 2021-05-19 09:00 | 3D-аниматор; Web-дизайнер; Ведущий программист; Мультимедиа-корреспондент; Системный аналитик; Технический писатель; Художник-дизайнер | 7h |  | 61 |  |
| 41 | 11.13 | Совещание 13 | 1h | 2021-05-26 09:00 | 2021-05-26 10:00 |  |  | 52.89d | start no earlier than 2021-05-26 09:00 | 3D-аниматор; Web-дизайнер; Ведущий программист; Мультимедиа-корреспондент; Системный аналитик; Технический писатель; Художник-дизайнер | 7h |  | 61 |  |
| 42 | 11.14 | Совещание 14 | 1h | 2021-06-02 09:00 | 2021-06-02 10:00 |  |  | 48.44d | start no earlier than 2021-06-02 09:00 | 3D-аниматор; Web-дизайнер; Ведущий программист; Мультимедиа-корреспондент; Системный аналитик; Технический писатель; Художник-дизайнер | 7h |  | 61 |  |
| 43 | 11.15 | Совещание 15 | 1h | 2021-06-09 09:00 | 2021-06-09 10:00 |  |  | 44d | start no earlier than 2021-06-09 09:00 | 3D-аниматор; Web-дизайнер; Ведущий программист; Мультимедиа-корреспондент; Системный аналитик; Технический писатель; Художник-дизайнер | 7h |  | 61 |  |
| 44 | 11.16 | Совещание 16 | 1h | 2021-06-16 09:00 | 2021-06-16 10:00 |  |  | 40.44d | start no earlier than 2021-06-16 09:00 | 3D-аниматор; Web-дизайнер; Ведущий программист; Мультимедиа-корреспондент; Системный аналитик; Технический писатель; Художник-дизайнер | 7h |  | 61 |  |
| 45 | 11.17 | Совещание 17 | 1h | 2021-06-23 09:00 | 2021-06-23 10:00 |  |  | 36d | start no earlier than 2021-06-23 09:00 | 3D-аниматор; Web-дизайнер; Ведущий программист; Мультимедиа-корреспондент; Системный аналитик; Технический писатель; Художник-дизайнер | 7h |  | 61 |  |
| 46 | 11.18 | Совещание 18 | 1h | 2021-06-30 09:00 | 2021-06-30 10:00 |  |  | 31.56d | start no earlier than 2021-06-30 09:00 | 3D-аниматор; Web-дизайнер; Ведущий программист; Мультимедиа-корреспондент; Системный аналитик; Технический писатель; Художник-дизайнер | 7h |  | 61 |  |
| 47 | 11.19 | Совещание 19 | 1h | 2021-07-07 09:00 | 2021-07-07 10:00 |  |  | 27.11d | start no earlier than 2021-07-07 09:00 | 3D-аниматор; Web-дизайнер; Ведущий программист; Мультимедиа-корреспондент; Системный аналитик; Технический писатель; Художник-дизайнер | 7h |  | 61 |  |
| 48 | 11.20 | Совещание 20 | 1h | 2021-07-14 09:00 | 2021-07-14 10:00 |  |  | 22.67d | start no earlier than 2021-07-14 09:00 | 3D-аниматор; Web-дизайнер; Ведущий программист; Мультимедиа-корреспондент; Системный аналитик; Технический писатель; Художник-дизайнер | 7h |  | 61 |  |
| 49 | 11.21 | Совещание 21 | 1h | 2021-07-21 09:00 | 2021-07-21 10:00 |  |  | 18.22d | start no earlier than 2021-07-21 09:00 | 3D-аниматор; Web-дизайнер; Ведущий программист; Мультимедиа-корреспондент; Системный аналитик; Технический писатель; Художник-дизайнер | 7h |  | 61 |  |
| 50 | 11.22 | Совещание 22 | 1h | 2021-07-28 09:00 | 2021-07-28 10:00 |  |  | 13.78d | start no earlier than 2021-07-28 09:00 | 3D-аниматор; Web-дизайнер; Ведущий программист; Мультимедиа-корреспондент; Системный аналитик; Технический писатель; Художник-дизайнер | 7h |  | 61 |  |
| 51 | 11.23 | Совещание 23 | 1h | 2021-08-04 09:00 | 2021-08-04 10:00 |  |  | 9.33d | start no earlier than 2021-08-04 09:00 | 3D-аниматор; Web-дизайнер; Ведущий программист; Мультимедиа-корреспондент; Системный аналитик; Технический писатель; Художник-дизайнер | 7h |  | 61 |  |
