# Проект name

Schedule from MS Project, 2021-03-01 to 2021-08-18, status date 2021-05-05, costs in ₽, A marks actual dates.
Длительность проекта - 6 месяцев / Бюджет проекта - 50 000 рублей / Команда - 16 человек

## Calendars

- Стандартный: Mon-Fri 09:00-13:00, 14:00-18:00; Sat-Sun off. Exceptions (off unless hours are given): 2021-03-08 (Международный женский день), 2021-05-03 (Перенос с 1 мая), 2021-05-10 (Перенос с 9 мая), 2021-06-14 (Перенос с 12 июня).

## Resources

| Resource | Group | Rate | Cost per use |
| --- | --- | --- | --- |
| Ведущий программист | Программирование | 10 | 100 |
| Программист №1 | Программирование | 7 | 50 |
| Программист №2 | Программирование | 7 | 50 |
| Программист №3 | Программирование | 7 | 50 |
| Программист №4 | Программирование | 7 | 50 |
| Системный аналитик | Анализ | 20 | 300 |
| Художник-дизайнер | Дизайн | 8 | 70 |
| Технический писатель | Документация | 5 | 20 |
| Web-дизайнер | Internet | 7 | 50 |
| 3D-аниматор | Дизайн | 8 | 70 |
| Мультимедиа-корреспондент | M-медиа | 3 | 20 |
| Наборщик данных №1 | Ввод данных | 2 | 10 |
| Наборщик данных №2 | Ввод данных | 2 | 10 |
| Наборщик данных №3 | Ввод данных | 2 | 10 |
| Наборщик данных №4 | Ввод данных | 2 | 10 |
| Наборщик данных №5 | Ввод данных | 2 | 10 |
| Сервер | Сервер | 2 |  |

## Schedule

| ID | WBS | Task | Type | Duration | Start | Finish | Predecessors | Complete | Remaining | Baseline start | Baseline finish | Baseline duration | Total slack | Free slack | Resources | Work | Actual work | Cost | Baseline cost | Actual cost |
| --- | --- | --- | --- | --- | --- | --- | --- | --- | --- | --- | --- | --- | --- | --- | --- | --- | --- | --- | --- | --- |
| 1 | 1 | Начало проекта | milestone | 0w | 2021-03-01 09:00 | 2021-03-01 09:00 |  |  |  | 2021-03-01 09:00 | 2021-03-01 09:00 | 0w | 0d |  |  |  |  |  |  |  |
| 2 | 2 | **Создание интерфейса** |  | 98.2d | 2021-03-01 09:00 A | 2021-07-21 10:36 | 1 | 81% | 18.4d | 2021-03-01 09:00 | 2021-07-09 18:00 | 91d | 0.12d |  |  | 587h | 347h | 5,984 | 5,600 | 3,796 |
| 3 | 2.1 | **Разработка дизайна интерфейса** |  | 29.12d | 2021-03-01 09:00 A | 2021-04-12 10:00 A |  | 100% |  | 2021-03-01 09:00 | 2021-04-06 15:00 | 25.62d |  |  |  | 347h | 347h | 2,986 | 2,770 | 2,986 |
| 4 | 2.1.1 | Разработка 2D графических элементов |  | 3w | 2021-03-01 09:00 A | 2021-03-23 12:00 A |  | 100% |  | 2021-03-01 09:00 | 2021-03-23 12:00 | 3w |  |  | Художник-дизайнер | 120h | 120h | 1,030 | 1,030 | 1,030 |
| 5 | 2.1.2 | Разработка 3D графических элементов |  | 2w | 2021-03-01 09:00 A | 2021-03-16 11:00 A | 4SS | 100% |  | 2021-03-01 09:00 | 2021-03-16 11:00 | 2w |  |  | 3D-аниматор | 80h | 80h | 710 | 710 | 710 |
| 6 | 2.1.3 | Создание заставки |  | 3.67w | 2021-03-16 11:00 A | 2021-04-12 10:00 A | 5 | 100% |  | 2021-03-16 11:00 | 2021-04-06 15:00 | 3w |  |  | 3D-аниматор | 147h | 147h | 1,246 | 1,030 | 1,246 |
| 7 | 2.2 | Программирование интерфейса |  | 2w | 2021-07-08 11:36 | 2021-07-21 10:36 | 3, 12 |  |  | 2021-06-28 09:00 | 2021-07-09 18:00 | 2w | 0.12d | 0d | Программист №3; Программист №4; Программист №1 | 240h |  | 1,998 | 1,830 |  |
| 8 | 3 | **Построение базы объектов** |  | 94.5d | 2021-03-01 09:00 A | 2021-07-15 13:00 |  | 25% | 70.88d | 2021-03-23 12:00 | 2021-07-16 17:00 | 80.5d | 23.57d |  | Сервер | 5377h | 924.25h | 14,782 | 15,110 | 4,871.23 |
| 9 | 3.1 | Построение базы объектов |  | 2w | 2021-03-01 09:00 A | 2021-03-16 11:00 A |  | 100% |  | 2021-03-23 12:00 | 2021-04-06 15:00 | 2w |  |  | Системный аналитик | 80h | 80h | 1,900 | 1,900 | 1,900 |
| 10 | 3.2 | Программирование средств обработки базы объектов |  | 2w | 2021-04-06 15:00 A | 2021-04-19 13:00 A | 9 | 100% |  | 2021-04-06 15:00 | 2021-04-20 17:00 | 2.05w |  |  | Программист №3; Программист №4 | 160h | 160h | 1,332 | 1,830 | 1,332 |
| 11 | 3.3 | Наполнение базы объектов |  | 12w | 2021-04-19 14:00 | 2021-07-15 13:00 | 10 |  |  | 2021-04-20 17:00 | 2021-07-16 17:00 | 12w | 23.57d |  | Наборщик данных №1; Наборщик данных №2; Наборщик данных №3; Наборщик данных №4; Наборщик данных №5 | 2400h |  | 4,850 | 4,850 |  |
| 12 | 4 | **Создание ядра GIS** |  | 89.33d | 2021-03-01 09:00 A | 2021-07-08 11:36 |  | 29% | 63.72d | 2021-03-01 09:00 | 2021-06-25 18:00 | 81d | 0.12d | 0d |  | 1787h | 288h | 18,449.8 | 19,652 | 4,709.6 |
| 13 | 4.1 | Анализ и проектирование ядра |  | 5.05w | 2021-03-01 09:00 A | 2021-04-09 14:36 A |  | 100% |  | 2021-03-01 09:00 | 2021-03-23 12:00 | 3w |  |  | Ведущий программист; Системный аналитик | 240h | 240h | 4,000 | 4,000 | 4,000 |
| 14 | 4.2 | Создание модели ядра |  | 6.04w | 2021-04-09 14:36 | 2021-07-07 12:36 | 13 |  |  | 2021-03-23 12:00 | 2021-04-27 18:00 | 5.12w | 1d | 42d | Программист №1; Ведущий программист | 400h |  | 3,690 | 3,550 |  |
| 15 | 4.3 | Тестирование модели ядра |  | 1.2w | 2021-04-27 18:00 A | 2021-05-06 11:00 A | 14 | 100% |  | 2021-04-28 09:00 | 2021-05-05 18:00 | 1w |  |  | Программист №1 | 48h | 48h | 419.6 | 330 | 419.6 |
| 16 | 4.4 | Создание рабочей версии ядра |  | 9.53w | 2021-05-06 11:00 | 2021-07-08 11:36 | 15 |  |  | 2021-05-06 09:00 | 2021-06-25 18:00 | 7w | 0.12d | 1.62d | Ведущий программист; Программист №1; Программист №3; Программист №4 | 1099h |  | 9,340.2 | 10,772 |  |
| 17 | 5 | Создание мультимедиа – наполнения |  | 6w | 2021-04-12 10:00 | 2021-05-26 18:00 | 3 |  |  | 2021-04-06 15:00 | 2021-05-21 13:00 | 6w | 58.08d |  | Мультимедиа-корреспондент | 240h |  | 740 | 740 |  |
| 18 | 6 | Создание справочной системы |  | 2w | 2021-07-30 15:36 | 2021-08-13 16:36 | 7 |  |  | 2021-07-22 09:00 | 2021-08-05 13:00 | 2w | 2.25d | 8.88d | Технический писатель | 80h |  | 420 | 420 |  |
| 19 | 7 | **Создание руководства пользователя** |  | 17.38d | 2021-07-07 11:36 | 2021-07-30 15:36 | 7FS-10d |  |  | 2021-06-28 09:00 | 2021-07-21 17:00 | 17.88d | 0d |  |  | 160h |  | 1,010 | 1,010 |  |
| 20 | 7.1 | Разработка дизайна руководства |  | 1w | 2021-07-07 11:36 | 2021-07-14 12:36 |  |  |  | 2021-06-28 09:00 | 2021-07-05 11:00 | 1w | 0d |  | Художник-дизайнер | 40h |  | 390 | 390 |  |
| 21 | 7.2 | Написание руководства пользователя |  | 3w | 2021-07-09 11:36 | 2021-07-30 15:36 | 20SS+2d |  |  | 2021-06-30 10:00 | 2021-07-21 17:00 | 3w | 0d |  | Технический писатель | 120h |  | 620 | 620 |  |
| 22 | 8 | **Создание web – сайта и поддержка** |  | 23.5d | 2021-07-09 11:36 | 2021-08-11 16:36 |  |  |  | 2021-06-30 10:00 | 2021-08-03 11:00 | 24.12d | 0d |  |  | 248h |  | 2,106 | 2,106 |  |
| 23 | 8.1 | Разработка структуры сайта |  | 1d | 2021-07-09 11:36 | 2021-07-12 11:36 | 21SS |  |  | 2021-06-30 10:00 | 2021-07-01 10:00 | 1d | 0d |  | Web-дизайнер | 8h |  | 106 | 106 |  |
| 24 | 8.2 | Разработка дизайна сайта |  | 1.4w | 2021-07-12 11:36 | 2021-07-21 14:36 | 23 |  |  | 2021-07-01 10:00 | 2021-07-12 13:00 | 1.43w | 0d |  | 3D-аниматор; Web-дизайнер; Художник-дизайнер | 120h |  | 1,110 | 1,110 |  |
| 25 | 8.3 | Наполнение сайта |  | 3w | 2021-07-21 14:36 | 2021-08-11 16:36 | 24 |  |  | 2021-07-12 14:00 | 2021-08-03 11:00 | 3w | 0d | 1.62d | Web-дизайнер | 120h |  | 890 | 890 |  |
| 26 | 9 | Тестирование сайта |  | 2.08w | 2021-08-04 16:36 | 2021-08-18 09:36 | 22FS-1w |  |  | 2021-07-27 11:00 | 2021-08-10 11:00 | 2w | 0d |  | Ведущий программист; Программист №1; Программист №3; Программист №4 | 314h |  | 2,838 | 3,280 |  |
| 27 | 10 | Сдача сайта в эксплуатацию | milestone | 0w | 2021-08-18 09:36 | 2021-08-18 09:36 | 26 |  |  | 2021-08-10 11:00 | 2021-08-10 11:00 | 0w | 0d | 1.62d |  |  |  |  |  |  |

| ID | WBS | Task | Type | Duration | Start | Finish | Complete | Remaining | Baseline start | Baseline finish | Baseline duration | Total slack | Constraint | Resources | Work | Actual work | Cost | Baseline cost | Actual cost |
| --- | --- | --- | --- | --- | --- | --- | --- | --- | --- | --- | --- | --- | --- | --- | --- | --- | --- | --- | --- |
| 28 | 11 | **Совещание** |  | 106.12d | 2021-03-03 09:00 A | 2021-08-04 10:00 | 43% | 59.98d | 2021-03-03 09:00 | 2021-08-04 10:00 | 106.12d | 0d |  |  | 157h | 68.6h | 1,375 | 1,403 | 582 |
| 29 | 11.1 | Совещание 1 | manual | 1h | 2021-03-03 09:00 A | 2021-03-03 10:00 A | 100% |  | 2021-03-03 09:00 | 2021-03-03 10:00 | 1h |  | start no earlier than 2021-03-03 09:00 | 3D-аниматор; Web-дизайнер; Ведущий программист; Мультимедиа-корреспондент; Системный аналитик; Технический писатель; Художник-дизайнер | 7h | 7h | 61 | 61 | 61 |
| 30 | 11.2 | Совещание 2 | manual | 1h | 2021-03-10 09:00 A | 2021-03-10 10:00 A | 100% |  | 2021-03-10 09:00 | 2021-03-10 10:00 | 1h |  | start no earlier than 2021-03-10 09:00 | 3D-аниматор; Web-дизайнер; Ведущий программист; Мультимедиа-корреспондент; Системный аналитик; Технический писатель; Художник-дизайнер | 7h | 7h | 61 | 61 | 61 |
| 31 | 11.3 | Совещание 3 | manual | 1h | 2021-03-17 09:00 A | 2021-03-17 10:00 A | 100% |  | 2021-03-17 09:00 | 2021-03-17 10:00 | 1h |  | start no earlier than 2021-03-17 09:00 | 3D-аниматор; Web-дизайнер; Ведущий программист; Мультимедиа-корреспондент; Системный аналитик; Технический писатель; Художник-дизайнер | 7h | 7h | 61 | 61 | 61 |
| 32 | 11.4 | Совещание 4 | manual | 1h | 2021-03-24 09:00 A | 2021-03-24 10:00 A | 100% |  | 2021-03-24 09:00 | 2021-03-24 10:00 | 1h |  | start no earlier than 2021-03-24 09:00 | 3D-аниматор; Web-дизайнер; Ведущий программист; Мультимедиа-корреспондент; Системный аналитик [80%]; Технический писатель; Художник-дизайнер | 6.8h | 6.8h | 57 | 61 | 57 |
| 33 | 11.5 | Совещание 5 | manual | 1h | 2021-03-31 09:00 A | 2021-03-31 10:00 A | 100% |  | 2021-03-31 09:00 | 2021-03-31 10:00 | 1h |  | start no earlier than 2021-03-31 09:00 | 3D-аниматор; Web-дизайнер; Ведущий программист; Мультимедиа-корреспондент; Системный аналитик [80%]; Технический писатель; Художник-дизайнер | 6.8h | 6.8h | 57 | 61 | 57 |
| 34 | 11.6 | Совещание 6 | manual | 1h | 2021-04-07 09:00 A | 2021-04-07 10:00 A | 100% |  | 2021-04-07 09:00 | 2021-04-07 10:00 | 1h |  | start no earlier than 2021-04-07 09:00 | 3D-аниматор; Web-дизайнер; Ведущий программист; Мультимедиа-корреспондент; Системный аналитик [80%]; Технический писатель; Художник-дизайнер | 6.8h | 6.8h | 57 | 61 | 57 |
| 35 | 11.7 | Совещание 7 | manual | 1h | 2021-04-14 09:00 A | 2021-04-14 10:00 A | 100% |  | 2021-04-14 09:00 | 2021-04-14 10:00 | 1h |  | start no earlier than 2021-04-14 09:00 | 3D-аниматор; Web-дизайнер; Ведущий программист; Мультимедиа-корреспондент; Системный аналитик [80%]; Технический писатель; Художник-дизайнер | 6.8h | 6.8h | 57 | 61 | 57 |
| 36 | 11.8 | Совещание 8 | manual | 1h | 2021-04-21 09:00 A | 2021-04-21 10:00 A | 100% |  | 2021-04-21 09:00 | 2021-04-21 10:00 | 1h |  | start no earlier than 2021-04-21 09:00 | 3D-аниматор; Web-дизайнер; Ведущий программист; Мультимедиа-корреспондент; Системный аналитик [80%]; Технический писатель; Художник-дизайнер | 6.8h | 6.8h | 57 | 61 | 57 |
| 37 | 11.9 | Совещание 9 | manual | 1h | 2021-04-28 09:00 A | 2021-04-28 10:00 A | 100% |  | 2021-04-28 09:00 | 2021-04-28 10:00 | 1h |  | start no earlier than 2021-04-28 09:00 | 3D-аниматор; Web-дизайнер; Ведущий программист; Мультимедиа-корреспондент; Системный аналитик [80%]; Технический писатель; Художник-дизайнер | 6.8h | 6.8h | 57 | 61 | 57 |
| 38 | 11.10 | Совещание 10 | manual | 1h | 2021-05-05 09:00 A | 2021-05-05 10:00 A | 100% |  | 2021-05-05 09:00 | 2021-05-05 10:00 | 1h |  | start no earlier than 2021-05-05 09:00 | 3D-аниматор; Web-дизайнер; Ведущий программист; Мультимедиа-корреспондент; Системный аналитик [80%]; Технический писатель; Художник-дизайнер | 6.8h | 6.8h | 57 | 61 | 57 |
| 39 | 11.11 | Совещание 11 | manual | 1h | 2021-05-12 09:00 | 2021-05-12 10:00 |  |  | 2021-05-12 09:00 | 2021-05-12 10:00 | 1h |  | start no earlier than 2021-05-12 09:00 | 3D-аниматор; Web-дизайнер; Ведущий программист; Мультимедиа-корреспондент; Системный аналитик [80%]; Технический писатель; Художник-дизайнер | 6.8h |  | 61 | 61 |  |
| 40 | 11.12 | Совещание 12 | manual | 1h | 2021-05-19 09:00 | 2021-05-19 10:00 |  |  | 2021-05-19 09:00 | 2021-05-19 10:00 | 1h |  | start no earlier than 2021-05-19 09:00 | 3D-аниматор; Web-дизайнер; Ведущий программист; Мультимедиа-корреспондент; Системный аналитик [80%]; Технический писатель; Художник-дизайнер | 6.8h |  | 61 | 61 |  |
| 41 | 11.13 | Совещание 13 | manual | 1h | 2021-05-26 09:00 | 2021-05-26 10:00 |  |  | 2021-05-26 09:00 | 2021-05-26 10:00 | 1h |  | start no earlier than 2021-05-26 09:00 | 3D-аниматор; Web-дизайнер; Ведущий программист; Мультимедиа-корреспондент; Системный аналитик [80%]; Технический писатель; Художник-дизайнер | 6.8h |  | 61 | 61 |  |
| 42 | 11.14 | Совещание 14 | manual | 1h | 2021-06-02 09:00 | 2021-06-02 10:00 |  |  | 2021-06-02 09:00 | 2021-06-02 10:00 | 1h |  | start no earlier than 2021-06-02 09:00 | 3D-аниматор; Web-дизайнер; Ведущий программист; Мультимедиа-корреспондент; Системный аналитик [80%]; Технический писатель; Художник-дизайнер | 6.8h |  | 61 | 61 |  |
| 43 | 11.15 | Совещание 15 | manual | 1h | 2021-06-09 09:00 | 2021-06-09 10:00 |  |  | 2021-06-09 09:00 | 2021-06-09 10:00 | 1h |  | start no earlier than 2021-06-09 09:00 | 3D-аниматор; Web-дизайнер; Ведущий программист; Мультимедиа-корреспондент; Системный аналитик [80%]; Технический писатель; Художник-дизайнер | 6.8h |  | 61 | 61 |  |
| 44 | 11.16 | Совещание 16 | manual | 1h | 2021-06-16 09:00 | 2021-06-16 10:00 |  |  | 2021-06-16 09:00 | 2021-06-16 10:00 | 1h |  | start no earlier than 2021-06-16 09:00 | 3D-аниматор; Web-дизайнер; Ведущий программист; Мультимедиа-корреспондент; Системный аналитик [80%]; Технический писатель; Художник-дизайнер | 6.8h |  | 61 | 61 |  |
| 45 | 11.17 | Совещание 17 | manual | 1h | 2021-06-23 09:00 | 2021-06-23 10:00 |  |  | 2021-06-23 09:00 | 2021-06-23 10:00 | 1h |  | start no earlier than 2021-06-23 09:00 | 3D-аниматор; Web-дизайнер; Ведущий программист; Мультимедиа-корреспондент; Системный аналитик [80%]; Технический писатель; Художник-дизайнер | 6.8h |  | 61 | 61 |  |
| 46 | 11.18 | Совещание 18 | manual | 1h | 2021-06-30 09:00 | 2021-06-30 10:00 |  |  | 2021-06-30 09:00 | 2021-06-30 10:00 | 1h |  | start no earlier than 2021-06-30 09:00 | 3D-аниматор; Web-дизайнер; Ведущий программист; Мультимедиа-корреспондент; Системный аналитик [80%]; Технический писатель; Художник-дизайнер | 6.8h |  | 61 | 61 |  |
| 47 | 11.19 | Совещание 19 | manual | 1h | 2021-07-07 09:00 | 2021-07-07 10:00 |  |  | 2021-07-07 09:00 | 2021-07-07 10:00 | 1h |  | start no earlier than 2021-07-07 09:00 | 3D-аниматор; Web-дизайнер; Ведущий программист; Мультимедиа-корреспондент; Системный аналитик [80%]; Технический писатель; Художник-дизайнер | 6.8h |  | 61 | 61 |  |
| 48 | 11.20 | Совещание 20 | manual | 1h | 2021-07-14 09:00 | 2021-07-14 10:00 |  |  | 2021-07-14 09:00 | 2021-07-14 10:00 | 1h |  | start no earlier than 2021-07-14 09:00 | 3D-аниматор; Web-дизайнер; Ведущий программист; Мультимедиа-корреспондент; Системный аналитик [80%]; Технический писатель; Художник-дизайнер | 6.8h |  | 61 | 61 |  |
| 49 | 11.21 | Совещание 21 | manual | 1h | 2021-07-21 09:00 | 2021-07-21 10:00 |  |  | 2021-07-21 09:00 | 2021-07-21 10:00 | 1h |  | start no earlier than 2021-07-21 09:00 | 3D-аниматор; Web-дизайнер; Ведущий программист; Мультимедиа-корреспондент; Системный аналитик [80%]; Технический писатель; Художник-дизайнер | 6.8h |  | 61 | 61 |  |
| 50 | 11.22 | Совещание 22 | manual | 1h | 2021-07-28 09:00 | 2021-07-28 10:00 |  |  | 2021-07-28 09:00 | 2021-07-28 10:00 | 1h |  | start no earlier than 2021-07-28 09:00 | 3D-аниматор; Web-дизайнер; Ведущий программист; Мультимедиа-корреспондент; Системный аналитик [80%]; Технический писатель; Художник-дизайнер | 6.8h |  | 61 | 61 |  |
| 51 | 11.23 | Совещание 23 | manual | 1h | 2021-08-04 09:00 | 2021-08-04 10:00 |  |  | 2021-08-04 09:00 | 2021-08-04 10:00 | 1h |  | start no earlier than 2021-08-04 09:00 | 3D-аниматор; Web-дизайнер; Ведущий программист; Мультимедиа-корреспондент; Системный аналитик [80%]; Технический писатель; Художник-дизайнер | 6.8h |  | 61 | 61 |  |
