# Проект name

Schedule from MS Project, 2021-03-01 to 2021-08-06, status date 2021-05-05, costs in ₽, A marks actual dates.
Длительность проекта - 6 месяцев / Бюджет проекта - 50 000 рублей / Команда - 16 человек

## Calendars

- Стандартный: Mon-Fri 09:00-13:00, 14:00-18:00; Sat-Sun off. Exceptions (off unless hours are given): 2021-03-08 (Международный женский день), 2021-05-03 (Перенос с 1 мая), 2021-05-10 (Перенос с 9 мая), 2021-06-14 (Перенос с 12 июня).

## Resources

| Resource | Group | Rate | Cost per use |
| --- | --- | --- | --- |
| Ведущий программист | Программирование | 10 | 100 |
| Программист №1 | Программирование | 7 | 50 |
| Программист №2 | Программирование | 7 | 50 |
| Программист №3 | Программирование | 7 | 50 |
| Программист №4 | Программирование | 7 | 50 |
| Системный аналитик | Анализ | 20 | 300 |
| Художник-дизайнер | Дизайн | 8 | 70 |
| Технический писатель | Документация | 5 | 20 |
| Web-дизайнер | Internet | 7 | 50 |
| 3D-аниматор | Дизайн | 8 | 70 |
| Мультимедиа-корреспондент | M-медиа | 3 | 20 |
| Наборщик данных №1 | Ввод данных | 2 | 10 |
| Наборщик данных №2 | Ввод данных | 2 | 10 |
| Наборщик данных №3 | Ввод данных | 2 | 10 |
| Наборщик данных №4 | Ввод данных | 2 | 10 |
| Наборщик данных №5 | Ввод данных | 2 | 10 |
| Сервер | Сервер | 2 |  |

## Schedule

| ID | WBS | Task | Type | Duration | Start | Finish | Predecessors | Complete | Remaining | Baseline start | Baseline finish | Baseline duration | Total slack | Constraint | Resources | Work | Actual work | Cost | Baseline cost | Actual cost |
| --- | --- | --- | --- | --- | --- | --- | --- | --- | --- | --- | --- | --- | --- | --- | --- | --- | --- | --- | --- | --- |
| 1 | 1 | Начало проекта | milestone | 0w | 2021-03-01 09:00 | 2021-03-01 09:00 |  |  |  | 2021-03-01 09:00 | 2021-03-01 09:00 | 0w | 110.25d |  |  |  |  |  |  |  |
| 2 | 2 | Разработка 2D графических элементов |  | 3w | 2021-03-01 09:00 A | 2021-03-23 12:00 A | 1 | 100% |  | 2021-03-01 09:00 | 2021-03-23 12:00 | 3w |  |  | Художник-дизайнер | 120h | 120h | 1,280 | 1,030 | 1,280 |
| 3 | 3 | Разработка 3D графических элементов |  | 2w | 2021-03-01 09:00 A | 2021-03-16 11:00 A | 2SS | 100% |  | 2021-03-01 09:00 | 2021-03-16 11:00 | 2w |  |  | 3D-аниматор | 80h | 80h | 960 | 710 | 960 |
| 4 | 4 | Создание заставки |  | 3.67w | 2021-03-16 11:00 A | 2021-04-12 10:00 A | 3 | 100% |  | 2021-03-16 11:00 | 2021-04-06 15:00 | 3w |  |  | 3D-аниматор | 147h | 147h | 1,496 | 1,030 | 1,496 |
| 5 | 5 | Программирование интерфейса |  | 2w | 2021-06-28 11:00 | 2021-07-09 10:00 | 12 |  |  | 2021-06-28 09:00 | 2021-07-09 18:00 | 2w | 0d |  | Программист №3; Программист №4; Программист №1 | 240h |  | 2,248 | 1,830 |  |
| 6 | 6 | Построение базы объектов |  | 9.5w | 2021-03-01 09:00 A | 2021-04-07 16:12 A |  | 100% |  | 2021-03-23 12:00 | 2021-04-06 15:00 | 2w |  |  | Системный аналитик [80%]; Сервер | 440h | 440h | 2,860 | 1,900 | 2,860 |
| 7 | 7 | Программирование средств обработки базы объектов |  | 8.4w | 2021-04-07 16:12 A | 2021-04-21 16:12 A | 6 | 100% |  | 2021-04-06 15:00 | 2021-04-20 17:00 | 2.05w |  |  | Программист №3; Программист №4; Сервер | 496h | 496h | 2,426.32 | 1,830 | 2,426.32 |
| 8 | 8 | Наполнение базы объектов |  | 52.35w | 2021-04-21 16:12 | 2021-07-19 16:12 | 7 |  |  | 2021-04-20 17:00 | 2021-07-16 17:00 | 12w | 11.47d |  | Наборщик данных №1; Наборщик данных №2; Наборщик данных №3; Наборщик данных №4; Наборщик данных №5; Сервер | 4488h |  | 9,534.8 | 4,850 |  |
| 9 | 9 | Анализ и проектирование ядра |  | 5.05w | 2021-03-01 09:00 A | 2021-04-09 14:36 A |  | 100% |  | 2021-03-01 09:00 | 2021-03-23 12:00 | 3w |  |  | Ведущий программист; Системный аналитик | 240h | 240h | 4,250 | 4,000 | 4,250 |
| 10 | 10 | Создание модели ядра |  | 7.57w | 2021-04-09 14:36 | 2021-07-19 09:36 | 9 |  |  | 2021-03-23 12:00 | 2021-04-27 18:00 | 5.12w | 14.18d |  | Программист №1; Ведущий программист | 400h |  | 3,940 | 3,550 |  |
| 11 | 11 | Тестирование модели ядра |  | 1.2w | 2021-04-27 18:00 A | 2021-05-06 11:00 A | 10 | 100% |  | 2021-04-28 09:00 | 2021-05-05 18:00 | 1w |  |  | Программист №1 | 48h | 48h | 669.6 | 330 | 669.6 |
| 12 | 12 | Создание рабочей версии ядра |  | 7.75w | 2021-05-06 11:00 | 2021-06-28 11:00 | 11 |  |  | 2021-05-06 09:00 | 2021-06-25 18:00 | 7w | 0d |  | Ведущий программист; Программист №1; Программист №3; Программист №4 | 1099h |  | 9,590.2 | 10,772 |  |
| 13 | 13 | Создание мультимедиа – наполнения |  | 6w | 2021-03-01 09:00 A | 2021-04-13 16:00 A |  | 100% |  | 2021-04-06 15:00 | 2021-05-21 13:00 | 6w |  |  | Мультимедиа-корреспондент | 240h | 240h | 740 | 740 | 740 |
| 14 | 14 | Создание справочной системы |  | 2w | 2021-07-20 14:00 | 2021-08-03 16:00 | 5 |  |  | 2021-07-22 09:00 | 2021-08-05 13:00 | 2w | 2.5d |  | Технический писатель | 80h |  | 420 | 420 |  |
| 15 | 15 | Разработка дизайна руководства |  | 1w | 2021-06-25 10:00 | 2021-07-02 11:00 | 5FS-10d |  |  | 2021-06-28 09:00 | 2021-07-05 11:00 | 1w | 0d |  | Художник-дизайнер | 40h |  | 390 | 390 |  |
| 16 | 16 | Написание руководства пользователя |  | 3w | 2021-06-29 10:00 | 2021-07-20 13:00 | 15SS+2d |  |  | 2021-06-30 10:00 | 2021-07-21 17:00 | 3w | 0d |  | Технический писатель | 120h |  | 620 | 620 |  |
| 17 | 17 | Разработка структуры сайта |  | 1d | 2021-06-29 10:00 | 2021-06-30 11:00 | 16SS |  |  | 2021-06-30 10:00 | 2021-07-01 10:00 | 1d | 0d |  | Web-дизайнер | 8h |  | 106 | 106 |  |
| 18 | 18 | Разработка дизайна сайта |  | 1.4w | 2021-06-30 11:00 | 2021-07-09 12:00 | 17 |  |  | 2021-07-01 10:00 | 2021-07-12 13:00 | 1.43w | 0d |  | 3D-аниматор; Web-дизайнер; Художник-дизайнер | 120h |  | 1,110 | 1,110 |  |
| 19 | 19 | Наполнение сайта |  | 3w | 2021-07-09 12:00 | 2021-07-30 16:00 | 18 |  |  | 2021-07-12 14:00 | 2021-08-03 11:00 | 3w | 0d |  | Web-дизайнер | 120h |  | 890 | 890 |  |
| 20 | 20 | Тестирование сайта |  | 2.12w | 2021-07-23 16:00 | 2021-08-06 11:00 | 19FS-1w |  |  | 2021-07-27 11:00 | 2021-08-10 11:00 | 2w | 0d |  | Ведущий программист; Программист №1; Программист №3; Программист №4 | 314h |  | 2,838 | 3,280 |  |
| 21 | 21 | Сдача сайта в эксплуатацию | milestone | 0w | 2021-08-06 11:00 | 2021-08-06 11:00 | 20 |  |  | 2021-08-10 11:00 | 2021-08-10 11:00 | 0w | 0d |  |  |  |  |  |  |  |
| 22 | 22 | **Совещание** |  | 106.12d | 2021-03-03 09:00 A | 2021-08-04 10:00 |  | 43% | 59.98d | 2021-03-03 09:00 | 2021-08-04 10:00 | 106.12d | 0d |  |  | 157h | 68.6h | 1,375 | 1,403 | 582 |
| 23 | 22.1 | Совещание 1 | manual | 1h | 2021-03-03 09:00 A | 2021-03-03 10:00 A |  | 100% |  | 2021-03-03 09:00 | 2021-03-03 10:00 | 1h |  | start no earlier than 2021-03-03 09:00 | 3D-аниматор; Web-дизайнер; Ведущий программист; Мультимедиа-корреспондент; Системный аналитик; Технический писатель; Художник-дизайнер | 7h | 7h | 61 | 61 | 61 |
| 24 | 22.2 | Совещание 2 | manual | 1h | 2021-03-10 09:00 A | 2021-03-10 10:00 A |  | 100% |  | 2021-03-10 09:00 | 2021-03-10 10:00 | 1h |  | start no earlier than 2021-03-10 09:00 | 3D-аниматор; Web-дизайнер; Ведущий программист; Мультимедиа-корреспондент; Системный аналитик; Технический писатель; Художник-дизайнер | 7h | 7h | 61 | 61 | 61 |
| 25 | 22.3 | Совещание 3 | manual | 1h | 2021-03-17 09:00 A | 2021-03-17 10:00 A |  | 100% |  | 2021-03-17 09:00 | 2021-03-17 10:00 | 1h |  | start no earlier than 2021-03-17 09:00 | 3D-аниматор; Web-дизайнер; Ведущий программист; Мультимедиа-корреспондент; Системный аналитик; Технический писатель; Художник-дизайнер | 7h | 7h | 61 | 61 | 61 |
| 26 | 22.4 | Совещание 4 | manual | 1h | 2021-03-24 09:00 A | 2021-03-24 10:00 A |  | 100% |  | 2021-03-24 09:00 | 2021-03-24 10:00 | 1h |  | start no earlier than 2021-03-24 09:00 | 3D-аниматор; Web-дизайнер; Ведущий программист; Мультимедиа-корреспондент; Системный аналитик [80%]; Технический писатель; Художник-дизайнер | 6.8h | 6.8h | 57 | 61 | 57 |
| 27 | 22.5 | Совещание 5 | manual | 1h | 2021-03-31 09:00 A | 2021-03-31 10:00 A |  | 100% |  | 2021-03-31 09:00 | 2021-03-31 10:00 | 1h |  | start no earlier than 2021-03-31 09:00 | 3D-аниматор; Web-дизайнер; Ведущий программист; Мультимедиа-корреспондент; Системный аналитик [80%]; Технический писатель; Художник-дизайнер | 6.8h | 6.8h | 57 | 61 | 57 |
| 28 | 22.6 | Совещание 6 | manual | 1h | 2021-04-07 09:00 A | 2021-04-07 10:00 A |  | 100% |  | 2021-04-07 09:00 | 2021-04-07 10:00 | 1h |  | start no earlier than 2021-04-07 09:00 | 3D-аниматор; Web-дизайнер; Ведущий программист; Мультимедиа-корреспондент; Системный аналитик [80%]; Технический писатель; Художник-дизайнер | 6.8h | 6.8h | 57 | 61 | 57 |
| 29 | 22.7 | Совещание 7 | manual | 1h | 2021-04-14 09:00 A | 2021-04-14 10:00 A |  | 100% |  | 2021-04-14 09:00 | 2021-04-14 10:00 | 1h |  | start no earlier than 2021-04-14 09:00 | 3D-аниматор; Web-дизайнер; Ведущий программист; Мультимедиа-корреспондент; Системный аналитик [80%]; Технический писатель; Художник-дизайнер | 6.8h | 6.8h | 57 | 61 | 57 |
| 30 | 22.8 | Совещание 8 | manual | 1h | 2021-04-21 09:00 A | 2021-04-21 10:00 A |  | 100% |  | 2021-04-21 09:00 | 2021-04-21 10:00 | 1h |  | start no earlier than 2021-04-21 09:00 | 3D-аниматор; Web-дизайнер; Ведущий программист; Мультимедиа-корреспондент; Системный аналитик [80%]; Технический писатель; Художник-дизайнер | 6.8h | 6.8h | 57 | 61 | 57 |
| 31 | 22.9 | Совещание 9 | manual | 1h | 2021-04-28 09:00 A | 2021-04-28 10:00 A |  | 100% |  | 2021-04-28 09:00 | 2021-04-28 10:00 | 1h |  | start no earlier than 2021-04-28 09:00 | 3D-аниматор; Web-дизайнер; Ведущий программист; Мультимедиа-корреспондент; Системный аналитик [80%]; Технический писатель; Художник-дизайнер | 6.8h | 6.8h | 57 | 61 | 57 |
| 32 | 22.10 | Совещание 10 | manual | 1h | 2021-05-05 09:00 A | 2021-05-05 10:00 A |  | 100% |  | 2021-05-05 09:00 | 2021-05-05 10:00 | 1h |  | start no earlier than 2021-05-05 09:00 | 3D-аниматор; Web-дизайнер; Ведущий программист; Мультимедиа-корреспондент; Системный аналитик [80%]; Технический писатель; Художник-дизайнер | 6.8h | 6.8h | 57 | 61 | 57 |
| 33 | 22.11 | Совещание 11 | manual | 1h | 2021-05-12 09:00 | 2021-05-12 10:00 |  |  |  | 2021-05-12 09:00 | 2021-05-12 10:00 | 1h |  | start no earlier than 2021-05-12 09:00 | 3D-аниматор; Web-дизайнер; Ведущий программист; Мультимедиа-корреспондент; Системный аналитик [80%]; Технический писатель; Художник-дизайнер | 6.8h |  | 61 | 61 |  |
| 34 | 22.12 | Совещание 12 | manual | 1h | 2021-05-19 09:00 | 2021-05-19 10:00 |  |  |  | 2021-05-19 09:00 | 2021-05-19 10:00 | 1h |  | start no earlier than 2021-05-19 09:00 | 3D-аниматор; Web-дизайнер; Ведущий программист; Мультимедиа-корреспондент; Системный аналитик [80%]; Технический писатель; Художник-дизайнер | 6.8h |  | 61 | 61 |  |
| 35 | 22.13 | Совещание 13 | manual | 1h | 2021-05-26 09:00 | 2021-05-26 10:00 |  |  |  | 2021-05-26 09:00 | 2021-05-26 10:00 | 1h |  | start no earlier than 2021-05-26 09:00 | 3D-аниматор; Web-дизайнер; Ведущий программист; Мультимедиа-корреспондент; Системный аналитик [80%]; Технический писатель; Художник-дизайнер | 6.8h |  | 61 | 61 |  |
| 36 | 22.14 | Совещание 14 | manual | 1h | 2021-06-02 09:00 | 2021-06-02 10:00 |  |  |  | 2021-06-02 09:00 | 2021-06-02 10:00 | 1h |  | start no earlier than 2021-06-02 09:00 | 3D-аниматор; Web-дизайнер; Ведущий программист; Мультимедиа-корреспондент; Системный аналитик [80%]; Технический писатель; Художник-дизайнер | 6.8h |  | 61 | 61 |  |
| 37 | 22.15 | Совещание 15 | manual | 1h | 2021-06-09 09:00 | 2021-06-09 10:00 |  |  |  | 2021-06-09 09:00 | 2021-06-09 10:00 | 1h |  | start no earlier than 2021-06-09 09:00 | 3D-аниматор; Web-дизайнер; Ведущий программист; Мультимедиа-корреспондент; Системный аналитик [80%]; Технический писатель; Художник-дизайнер | 6.8h |  | 61 | 61 |  |
| 38 | 22.16 | Совещание 16 | manual | 1h | 2021-06-16 09:00 | 2021-06-16 10:00 |  |  |  | 2021-06-16 09:00 | 2021-06-16 10:00 | 1h |  | start no earlier than 2021-06-16 09:00 | 3D-аниматор; Web-дизайнер; Ведущий программист; Мультимедиа-корреспондент; Системный аналитик [80%]; Технический писатель; Художник-дизайнер | 6.8h |  | 61 | 61 |  |
| 39 | 22.17 | Совещание 17 | manual | 1h | 2021-06-23 09:00 | 2021-06-23 10:00 |  |  |  | 2021-06-23 09:00 | 2021-06-23 10:00 | 1h |  | start no earlier than 2021-06-23 09:00 | 3D-аниматор; Web-дизайнер; Ведущий программист; Мультимедиа-корреспондент; Системный аналитик [80%]; Технический писатель; Художник-дизайнер | 6.8h |  | 61 | 61 |  |
| 40 | 22.18 | Совещание 18 | manual | 1h | 2021-06-30 09:00 | 2021-06-30 10:00 |  |  |  | 2021-06-30 09:00 | 2021-06-30 10:00 | 1h |  | start no earlier than 2021-06-30 09:00 | 3D-аниматор; Web-дизайнер; Ведущий программист; Мультимедиа-корреспондент; Системный аналитик [80%]; Технический писатель; Художник-дизайнер | 6.8h |  | 61 | 61 |  |
| 41 | 22.19 | Совещание 19 | manual | 1h | 2021-07-07 09:00 | 2021-07-07 10:00 |  |  |  | 2021-07-07 09:00 | 2021-07-07 10:00 | 1h |  | start no earlier than 2021-07-07 09:00 | 3D-аниматор; Web-дизайнер; Ведущий программист; Мультимедиа-корреспондент; Системный аналитик [80%]; Технический писатель; Художник-дизайнер | 6.8h |  | 61 | 61 |  |
| 42 | 22.20 | Совещание 20 | manual | 1h | 2021-07-14 09:00 | 2021-07-14 10:00 |  |  |  | 2021-07-14 09:00 | 2021-07-14 10:00 | 1h |  | start no earlier than 2021-07-14 09:00 | 3D-аниматор; Web-дизайнер; Ведущий программист; Мультимедиа-корреспондент; Системный аналитик [80%]; Технический писатель; Художник-дизайнер | 6.8h |  | 61 | 61 |  |
| 43 | 22.21 | Совещание 21 | manual | 1h | 2021-07-21 09:00 | 2021-07-21 10:00 |  |  |  | 2021-07-21 09:00 | 2021-07-21 10:00 | 1h |  | start no earlier than 2021-07-21 09:00 | 3D-аниматор; Web-дизайнер; Ведущий программист; Мультимедиа-корреспондент; Системный аналитик [80%]; Технический писатель; Художник-дизайнер | 6.8h |  | 61 | 61 |  |
| 44 | 22.22 | Совещание 22 | manual | 1h | 2021-07-28 09:00 | 2021-07-28 10:00 |  |  |  | 2021-07-28 09:00 | 2021-07-28 10:00 | 1h |  | start no earlier than 2021-07-28 09:00 | 3D-аниматор; Web-дизайнер; Ведущий программист; Мультимедиа-корреспондент; Системный аналитик [80%]; Технический писатель; Художник-дизайнер | 6.8h |  | 61 | 61 |  |
| 45 | 22.23 | Совещание 23 | manual | 1h | 2021-08-04 09:00 | 2021-08-04 10:00 |  |  |  | 2021-08-04 09:00 | 2021-08-04 10:00 | 1h |  | start no earlier than 2021-08-04 09:00 | 3D-аниматор; Web-дизайнер; Ведущий программист; Мультимедиа-корреспондент; Системный аналитик [80%]; Технический писатель; Художник-дизайнер | 6.8h |  | 61 | 61 |  |
