# rk_01

Schedule from MS Project, 2021-04-05 to 2021-08-02, status date 2021-07-01, costs in ₽, A marks actual dates.

## Calendars

- Стандартный: Mon-Fri 09:00-13:00, 14:00-18:00; Sat-Sun off. Exceptions (off unless hours are given): 2021-05-03 (1 мая), 2021-05-10 (9 мая), 2021-06-14 (12 июня).

## Resources

| Resource | Group | Rate | Cost per use |
| --- | --- | --- | --- |
| Аналитик |  | 500 | 5000 |
| Ведущий программист | Программисты | 437.5 | 3000 |
| Программист 1 | Программисты | 312.5 | 2000 |
| Программист 2 | Программисты | 312.5 | 2000 |
| Программист 3 | Программисты | 312.5 | 2000 |
| Технический писатель |  | 250 | 1500 |
| Наборщики данных | Технический персонал | 218.75 | 1000 |
| Сервер базы данных | Оборудование | 25000 | 10000 |
| Картриджи для принтера | Расходные материалы | 2500 |  |
| Бумага | Расходные материалы | 200 |  |
| Техниечский писатель |  |  |  |
| Специалист по профилактике |  |  | 3000 |

## Schedule

| ID | WBS | Task | Type | Duration | Start | Finish | Predecessors | Complete | Remaining | Baseline start | Baseline finish | Baseline duration | Total slack | Free slack | Constraint | Resources | Work | Actual work | Cost | Baseline cost | Actual cost |
| --- | --- | --- | --- | --- | --- | --- | --- | --- | --- | --- | --- | --- | --- | --- | --- | --- | --- | --- | --- | --- | --- |
| 1 | 1 | **РК 1** |  | 79.75d | 2021-04-05 09:00 A | 2021-08-02 12:00 |  | 64% | 28.82d | 2021-04-05 09:00 | 2021-07-19 15:00 | 70.38d | 0d |  |  | Бумага [0.6%]; Картриджи для принтера [1.2%] | 1576h | 1157h | 613,810 | 557,497.5 | 485,545.72 |
| 2 | 1.1 | Начало реализации проекта | milestone | 0d | 2021-04-05 09:00 A | 2021-04-05 09:00 A |  | 100% |  | 2021-04-05 09:00 | 2021-04-05 09:00 | 0d |  |  |  |  |  |  |  |  |  |
| 3 | 1.2 | **Программирование** |  | 43.75d | 2021-04-06 09:00 A | 2021-06-10 11:00 A |  | 100% |  | 2021-04-06 09:00 | 2021-05-27 13:00 | 34.38d |  |  |  | Сервер базы данных | 1062h | 1062h | 426,125 | 377,500 | 426,125 |
| 4 | 1.2.1 | Постановка задачи |  | 5d | 2021-04-06 09:00 A | 2021-04-12 18:00 A | 2FS+1d | 100% |  | 2021-04-06 09:00 | 2021-04-12 18:00 | 5d |  |  |  | Аналитик; Ведущий программист | 80h | 80h | 45,500 | 45,500 | 45,500 |
| 5 | 1.2.2 | Разработка интерфейса |  | 5d | 2021-05-05 12:00 A | 2021-05-13 16:00 A | 4 | 100% |  | 2021-05-05 12:00 | 2021-05-13 16:00 | 5d |  |  |  | Ведущий программист; Программист 1; Программист 2; Программист 3 | 160h | 160h | 65,750 | 64,000 | 65,750 |
| 6 | 1.2.3 | Разработка модулей обработки данных |  | 18.75d | 2021-05-13 16:00 A | 2021-06-10 11:00 A | 5 | 100% |  | 2021-05-13 16:00 | 2021-05-27 13:00 | 9.38d |  |  |  | Программист 2; Программист 3; Программист 1 | 350h | 350h | 115,375 | 68,500 | 115,375 |
| 7 | 1.2.4 | Разработка базы данных |  | 15d | 2021-04-13 09:00 A | 2021-05-05 12:00 A | 4 | 100% |  | 2021-04-13 09:00 | 2021-05-05 12:00 | 15d |  |  |  | Аналитик; Программист 1; Программист 2 | 280h | 280h | 119,000 | 119,000 | 119,000 |
| 8 | 1.2.5 | Заполнение базы данных |  | 22.38d | 2021-05-05 12:00 A | 2021-06-08 13:00 A | 7 | 100% |  | 2021-05-05 12:00 | 2021-05-24 16:00 | 12d |  |  |  | Наборщики данных [200%] | 192h | 192h | 44,000 | 44,000 | 44,000 |
| 9 | 1.3 | Программирование завершено | milestone | 0d | 2021-06-10 11:00 A | 2021-06-10 11:00 A | 6, 8 | 100% |  | 2021-05-27 13:00 | 2021-05-27 13:00 | 0d |  |  |  |  |  |  |  |  |  |
| 10 | 1.4 | **Тестирование и отладка** |  | 18.33d | 2021-06-10 11:00 A | 2021-07-08 11:40 |  | 18% | 15d | 2021-05-27 14:00 | 2021-06-24 14:40 | 18.33d | 16.67d |  |  |  | 296h | 80h | 124,750 | 119,500 | 31,180 |
| 11 | 1.4.1 | Подготовка тестовых наборов данных |  | 3.33d | 2021-06-10 11:00 A | 2021-06-16 14:40 A | 9FS-5d | 100% |  | 2021-05-27 14:00 | 2021-06-01 16:40 | 3.33d |  |  |  | Программист 1; Программист 3; Программист 2 | 80h | 80h | 31,000 | 31,000 | 31,000 |
| 12 | 1.4.2 | Тестирование и исправление ошибок |  | 15d | 2021-06-16 14:40 | 2021-07-08 11:40 | 11 |  |  | 2021-06-01 16:40 | 2021-06-24 14:40 | 15d | 16.67d | 0d |  | Ведущий программист; Программист 2 | 216h |  | 92,750 | 87,500 |  |
| 13 | 1.5 | Отладка завершена | milestone | 0d | 2021-07-08 11:40 | 2021-07-08 11:40 | 12 |  |  | 2021-06-24 14:40 | 2021-06-24 14:40 | 0d | 16.67d |  |  |  |  |  |  |  |  |
| 14 | 1.6 | **Разработка документации** |  | 25d | 2021-06-25 15:00 | 2021-08-02 12:00 |  |  |  | 2021-06-10 17:00 | 2021-07-19 15:00 | 25d | 0d |  |  | Картриджи для принтера; Бумага | 200h |  | 24,200 | 24,200 |  |
| 15 | 1.6.1 | Составление программной документации |  | 10d | 2021-06-25 15:00 | 2021-07-09 18:00 | 9SS+10d |  |  | 2021-06-10 17:00 | 2021-06-28 11:00 | 10d | 0d |  |  | Технический писатель | 80h |  | 21,500 | 21,500 |  |
| 16 | 1.6.2 | Составление пользовательской документации |  | 15d | 2021-07-12 09:00 | 2021-08-02 12:00 | 15 |  |  | 2021-06-28 11:00 | 2021-07-19 15:00 | 15d | 0d |  |  | Техниечский писатель | 120h |  |  |  |  |
| 17 | 1.7 | Конец проекта | milestone | 0d | 2021-08-02 12:00 | 2021-08-02 12:00 | 16 |  |  | 2021-07-19 15:00 | 2021-07-19 15:00 | 0d | 0d |  |  |  |  |  |  |  |  |
| 18 | 1.8 | **Профилактика оборудования** |  | 45.5d | 2021-04-27 09:00 A | 2021-07-06 12:00 |  | 83% | 7.58d | 2021-04-27 09:00 | 2021-07-06 12:00 | 45.5d | 0d |  |  |  | 18h | 15h | 18,000 | 18,000 | 15,000 |
| 19 | 1.8.1 | Профилактика оборудования 1 | manual | 3h | 2021-04-27 09:00 A | 2021-04-27 12:00 A |  | 100% |  | 2021-04-27 09:00 | 2021-04-27 12:00 | 3h |  |  | start no earlier than 2021-04-27 09:00 | Специалист по профилактике | 3h | 3h | 3,000 | 3,000 | 3,000 |
| 20 | 1.8.2 | Профилактика оборудования 2 | manual | 3h | 2021-05-11 09:00 A | 2021-05-11 12:00 A |  | 100% |  | 2021-05-11 09:00 | 2021-05-11 12:00 | 3h |  |  | start no earlier than 2021-05-11 09:00 | Специалист по профилактике | 3h | 3h | 3,000 | 3,000 | 3,000 |
| 21 | 1.8.3 | Профилактика оборудования 3 | manual | 3h | 2021-05-25 09:00 A | 2021-05-25 12:00 A |  | 100% |  | 2021-05-25 09:00 | 2021-05-25 12:00 | 3h |  |  | start no earlier than 2021-05-25 09:00 | Специалист по профилактике | 3h | 3h | 3,000 | 3,000 | 3,000 |
| 22 | 1.8.4 | Профилактика оборудования 4 | manual | 3h | 2021-06-08 09:00 A | 2021-06-08 12:00 A |  | 100% |  | 2021-06-08 09:00 | 2021-06-08 12:00 | 3h |  |  | start no earlier than 2021-06-08 09:00 | Специалист по профилактике | 3h | 3h | 3,000 | 3,000 | 3,000 |
| 23 | 1.8.5 | Профилактика оборудования 5 | manual | 3h | 2021-06-22 09:00 A | 2021-06-22 12:00 A |  | 100% |  | 2021-06-22 09:00 | 2021-06-22 12:00 | 3h |  |  | start no earlier than 2021-06-22 09:00 | Специалист по профилактике | 3h | 3h | 3,000 | 3,000 | 3,000 |
| 24 | 1.8.6 | Профилактика оборудования 6 | manual | 3h | 2021-07-06 09:00 | 2021-07-06 12:00 |  |  |  | 2021-07-06 09:00 | 2021-07-06 12:00 | 3h |  |  | start no earlier than 2021-07-06 09:00 | Специалист по профилактике | 3h |  | 3,000 | 3,000 |  |
