# rk_01

Schedule from MS Project, 2021-04-05 to 2021-08-03, costs in ₽.

## Calendars

- Стандартный: Mon-Fri 09:00-13:00, 14:00-18:00; Sat-Sun off. Exceptions (off unless hours are given): 2021-05-03 (1 мая), 2021-05-10 (9 мая), 2021-06-14 (12 июня).

## Resources

| Resource | Group | Rate | Cost per use |
| --- | --- | --- | --- |
| Аналитик |  | 500 | 5000 |
| Ведущий программист | Программисты | 437.5 | 3000 |
| Программист 1 | Программисты | 312.5 | 2000 |
| Программист 2 | Программисты | 312.5 | 2000 |
| Программист 3 | Программисты | 312.5 | 2000 |
| Технический писатель |  | 250 | 1500 |
| Наборщики данных | Технический персонал | 218.75 | 1000 |
| Сервер базы данных | Оборудование | 25000 | 10000 |
| Картриджи для принтера | Расходные материалы | 2500 |  |
| Бумага | Расходные материалы | 200 |  |
| Техниечский писатель |  |  |  |
| Специалист по профилактике |  |  | 3000 |

## Schedule

| ID | WBS | Task | Type | Duration | Start | Finish | Predecessors | Total slack | Free slack | Constraint | Resources | Work | Cost |
| --- | --- | --- | --- | --- | --- | --- | --- | --- | --- | --- | --- | --- | --- |
| 1 | 1 | **РК 1** |  | 81d | 2021-04-05 09:00 | 2021-08-03 11:00 |  | 0d |  |  | Бумага [0.6%]; Картриджи для принтера [1.2%] | 1426h | 557,260 |
| 2 | 1.1 | Начало реализации проекта | milestone | 0d | 2021-04-05 09:00 | 2021-04-05 09:00 |  | 0d |  |  |  |  |  |
| 3 | 1.2 | **Программирование** |  | 45d | 2021-04-06 09:00 | 2021-06-11 13:00 |  | 0d |  |  | Сервер базы данных | 912h | 376,500 |
| 4 | 1.2.1 | Постановка задачи |  | 5d | 2021-04-06 09:00 | 2021-04-12 18:00 | 2FS+1d | 0d |  |  | Аналитик; Ведущий программист | 80h | 45,500 |
| 5 | 1.2.2 | Разработка интерфейса |  | 10d | 2021-04-13 09:00 | 2021-04-26 18:00 | 4 | 0d |  |  | Ведущий программист; Программист 1 | 160h | 65,000 |
| 6 | 1.2.3 | Разработка модулей обработки данных |  | 15d | 2021-05-20 16:00 | 2021-06-11 13:00 | 5 | 0d |  |  | Программист 2; Программист 3 | 200h | 66,500 |
| 7 | 1.2.4 | Разработка базы данных |  | 15d | 2021-04-27 09:00 | 2021-05-20 16:00 | 4 | 3d | 0d |  | Аналитик; Программист 1; Программист 2 | 280h | 119,000 |
| 8 | 1.2.5 | Заполнение базы данных |  | 12d | 2021-05-20 16:00 | 2021-06-08 10:00 | 7 | 3d |  |  | Наборщики данных [200%] | 192h | 44,000 |
| 9 | 1.3 | Программирование завершено | milestone | 0d | 2021-06-11 13:00 | 2021-06-11 13:00 | 6, 8 | 0d |  |  |  |  |  |
| 10 | 1.4 | **Тестирование и отладка** |  | 20d | 2021-06-11 14:00 | 2021-07-13 11:00 |  | 15d |  |  |  | 296h | 117,500 |
| 11 | 1.4.1 | Подготовка тестовых наборов данных |  | 5d | 2021-06-11 14:00 | 2021-06-21 13:00 | 9FS-5d | 15d | 0d |  | Программист 1; Программист 3 | 80h | 29,000 |
| 12 | 1.4.2 | Тестирование и исправление ошибок |  | 15d | 2021-06-21 14:00 | 2021-07-13 11:00 | 11 | 15d | 0d |  | Ведущий программист; Программист 2 | 216h | 87,500 |
| 13 | 1.5 | Отладка завершена | milestone | 0d | 2021-07-13 11:00 | 2021-07-13 11:00 | 12 | 15d |  |  |  |  |  |
| 14 | 1.6 | **Разработка документации** |  | 25d | 2021-06-28 17:00 | 2021-08-03 11:00 |  | 0d |  |  | Картриджи для принтера; Бумага | 200h | 24,200 |
| 15 | 1.6.1 | Составление программной документации |  | 10d | 2021-06-28 17:00 | 2021-07-13 11:00 | 9SS+10d | 0d |  |  | Технический писатель | 80h | 21,500 |
| 16 | 1.6.2 | Составление пользовательской документации |  | 15d | 2021-07-13 11:00 | 2021-08-03 11:00 | 15 | 0d |  |  | Техниечский писатель | 120h |  |
| 17 | 1.7 | Конец проекта | milestone | 0d | 2021-08-03 11:00 | 2021-08-03 11:00 | 16 | 0d |  |  |  |  |  |
| 18 | 1.8 | **Профилактика оборудования** |  | 45.5d | 2021-04-27 09:00 | 2021-07-06 12:00 |  | 0d |  |  |  | 18h | 18,000 |
| 19 | 1.8.1 | Профилактика оборудования 1 | manual | 3h | 2021-04-27 09:00 | 2021-04-27 12:00 |  |  |  | start no earlier than 2021-04-27 09:00 | Специалист по профилактике | 3h | 3,000 |
| 20 | 1.8.2 | Профилактика оборудования 2 | manual | 3h | 2021-05-11 09:00 | 2021-05-11 12:00 |  |  |  | start no earlier than 2021-05-11 09:00 | Специалист по профилактике | 3h | 3,000 |
| 21 | 1.8.3 | Профилактика оборудования 3 | manual | 3h | 2021-05-25 09:00 | 2021-05-25 12:00 |  |  |  | start no earlier than 2021-05-25 09:00 | Специалист по профилактике | 3h | 3,000 |
| 22 | 1.8.4 | Профилактика оборудования 4 | manual | 3h | 2021-06-08 09:00 | 2021-06-08 12:00 |  |  |  | start no earlier than 2021-06-08 09:00 | Специалист по профилактике | 3h | 3,000 |
| 23 | 1.8.5 | Профилактика оборудования 5 | manual | 3h | 2021-06-22 09:00 | 2021-06-22 12:00 |  |  |  | start no earlier than 2021-06-22 09:00 | Специалист по профилактике | 3h | 3,000 |
| 24 | 1.8.6 | Профилактика оборудования 6 | manual | 3h | 2021-07-06 09:00 | 2021-07-06 12:00 |  |  |  | start no earlier than 2021-07-06 09:00 | Специалист по профилактике | 3h | 3,000 |
